Schedule from GanttProject, 2017-05-02 to 2017-05-30.

## Calendars

- Project calendar: Mon-Sun working.

## Resources

| Resource |
| --- |
| araghura |
| eanjum |
| jmacdona |
| ilyasw |

## Schedule

| ID | WBS | Task | Duration | Start | Finish | Complete | Resources | Jira |
| --- | --- | --- | --- | --- | --- | --- | --- | --- |
| 1 | 1 | **Project** | 29d | 2017-05-02 | 2017-05-30 | 42% |  |  |
| 2 | 1.1 | **Weather ford Eval** | 29d | 2017-05-02 | 2017-05-30 | 42% |  | NUCDM-63 |
| 3 | 1.1.1 | **Preliminary Tasks** | 2d | 2017-05-03 | 2017-05-04 |  |  | NUCDM-60 |
| 4 | 1.1.1.1 | Get Wakamma server/client to run in Linux | 2d | 2017-05-03 | 2017-05-04 | -100% | araghura | NUCDM-61 |
| 5 | 1.1.2 | **Device** | 28d | 2017-05-03 | 2017-05-30 | 4% |  | NUCDM-62 |
| 6 | 1.1.2.1 | Get imx6 SabreLite Nucleus up and running (with ethernet) | 2d | 2017-05-03 | 2017-05-04 | 100% | araghura | NUCDM-64 |
| 7 | 1.1.2.2 | **Port Wakamma client to Nucleus** | 5d | 2017-05-08 | 2017-05-12 |  | araghura | NUCDM-65 |
| 8 | 1.1.2.2.1 | Use Wakamma CoAP implementation | 5d | 2017-05-08 | 2017-05-12 |  | araghura | NUCDM-66 |
| 9 | 1.1.2.3 | Validate against wakama server on linux machine | 2d | 2017-05-08 | 2017-05-09 |  | araghura | NUCDM-67 |
| 10 | 1.1.2.4 | **Device Agent** | 23d | 2017-05-08 | 2017-05-30 |  |  | NUCDM-68 |
| 11 | 1.1.2.4.1 | Create Device Agent | 2d | 2017-05-08 | 2017-05-09 |  | eanjum | NUCDM-69 |
| 12 | 1.1.2.4.2 | Add firmware update capability to Device Agent | 2d | 2017-05-10 | 2017-05-11 |  | eanjum | NUCDM-70 |
| 13 | 1.1.2.4.3 | Add Nucleus-based bootloader for SabreLite and logistics for firmware / application updates | 7d | 2017-05-12 | 2017-05-18 |  | eanjum | NUCDM-71 |
| 14 | 1.1.2.4.4 | Protect boot.ini (decrypt / encrypt) | 4d | 2017-05-19 | 2017-05-22 |  | eanjum | NUCDM-72 |
| 15 | 1.1.2.4.5 | Create Certificate validation routine | 2d | 2017-05-23 | 2017-05-24 |  | eanjum | NUCDM-73 |
| 16 | 1.1.2.4.6 | Hawkbit integration into DM agent | 6d | 2017-05-25 | 2017-05-30 |  | eanjum | NUCDM-74 |
| 17 | 1.1.2.5 | Create spoofed sensor data stream | 1d | 2017-05-08 | 2017-05-08 |  | araghura | NUCDM-75 |
| 18 | 1.1.3 | **Server** | 4d | 2017-05-02 | 2017-05-05 | 100% |  | NUCDM-76 |
| 19 | 1.1.3.1 | Get VM image on windows guest with Leshan running | 3d | 2017-05-02 | 2017-05-04 | 100% | jmacdona | NUCDM-77 |
| 20 | 1.1.3.2 | Create VM image based on Ubuntu 16.04 | 2d | 2017-05-03 | 2017-05-04 | 100% | jmacdona | NUCDM-78 |
| 21 | 1.1.3.3 | Validate VM image against Zephyr node | 2d | 2017-05-03 | 2017-05-04 | 100% | jmacdona | NUCDM-79 |
| 22 | 1.1.3.4 | Integrate Wakamma server demo UI into Leshan | 3d | 2017-05-03 | 2017-05-05 | 100% | ilyasw | NUCDM-80 |
| 23 | 1.1.3.5 | Extend object model | 2d | 2017-05-04 | 2017-05-05 | 100% | ilyasw | NUCDM-81 |
| 24 | 1.1.3.6 | Create Integrated UI for HawkBit and Leshan | 4d | 2017-05-02 | 2017-05-05 | 100% | ilyasw | NUCDM-82 |
| 25 | 1.1.3.7 | Add HawkBit to VM | 2d | 2017-05-03 | 2017-05-04 | 100% | jmacdona | NUCDM-83 |
| 26 | 1.1.3.8 | Device authentication | 2d | 2017-05-03 | 2017-05-04 | 100% | jmacdona | NUCDM-84 |

| ID | WBS | Task | Duration | Start | Finish | Complete | Resources | Jira |
| --- | --- | --- | --- | --- | --- | --- | --- | --- |
| 27 | 1.1.4 | **Signing Tool** | 2d | 2017-05-03 | 2017-05-04 | 100% |  | NUCDM-85 |
| 28 | 1.1.4.1 | Identify OSS tool for generation of certificates | 2d | 2017-05-03 | 2017-05-04 | 100% | jmacdona | NUCDM-86 |
| 29 | 1.1.4.2 | Create host/server side signing tools | 2d | 2017-05-03 | 2017-05-04 | 100% | jmacdona | NUCDM-87 |
| 30 | 1.1.5 | **Integration Use Cases** | 11d | 2017-05-08 | 2017-05-18 |  |  | NUCDM-88 |
| 31 | 1.1.5.1 | Write client side demo to showcase below use cases | 4d | 2017-05-08 | 2017-05-11 |  | araghura | NUCDM-89 |
| 32 | 1.1.5.2 | Write server side demo to showcase above use cases (assumption of no work so buffer amount) | 5d | 2017-05-12 | 2017-05-16 |  | jmacdona | NUCDM-90 |
| 33 | 1.1.6 | **Documentation** | 12d | 2017-05-08 | 2017-05-19 |  |  | NUCDM-91 |
| 34 | 1.1.6.1 | Documentation of the use cases for demonstration | 1d | 2017-05-08 | 2017-05-08 |  | jmacdona | NUCDM-92 |
| 35 | 1.1.6.2 | Documentation of the use cases for demonstration | 1d | 2017-05-09 | 2017-05-09 |  | araghura | NUCDM-93 |
